# WCM Construction Schedule Template

How a schedule from MS Project XML changed from version to version. A marks actual dates.

## Version 1 (saved 2026-08-13)

Note of the change: Add WCM-Construction.xml template and lock in office decisions

| ID | WBS | Task | Duration |
| --- | --- | --- | --- |
| 1 | 1 | **Preconstruction & Permits** |  |
| 2 |  | 00 52 00 - Subcontractor Buyout & Agreements | 10d |
| 3 |  | 01 33 00 - Submittals & Shop Drawings | 10d |
| 4 |  | 01 41 00 - Permits & Regulatory Approvals | 10d |
| 5 | 2 | **Mobilization & Site Establishment** |  |
| 6 |  | 01 50 00 - Temporary Facilities & Site Controls | 10d |
| 7 |  | 01 56 00 - Temporary Barriers, Hoarding & Fencing | 10d |
| 8 | 3 | **Sitework & Earthworks** |  |
| 9 |  | 02 41 00 - Demolition | 10d |
| 10 |  | 31 10 00 - Site Clearing | 10d |
| 11 |  | 31 23 00 - Excavation & Fill | 10d |
| 12 |  | 33 10 00 - Underground Site Services | 10d |
| 13 | 4 | **Foundations & Substructure** |  |
| 14 |  | 03 30 00 - Cast-in-Place Concrete - Footings & Foundations | 10d |
| 15 |  | 07 11 00 - Foundation Dampproofing & Waterproofing | 10d |
| 16 |  | 33 46 00 - Foundation Drainage | 10d |
| 17 | 5 | **Superstructure** |  |
| 18 |  | 03 30 00 - Cast-in-Place Concrete - Structure | 10d |
| 19 |  | 05 10 00 - Structural Steel Framing | 10d |
| 20 |  | 05 30 00 - Metal Decking | 10d |
| 21 |  | 06 10 00 - Rough Carpentry & Framing | 10d |
| 22 | 6 | **Envelope & Roofing** |  |
| 23 |  | 04 20 00 - Unit Masonry | 10d |
| 24 |  | 07 20 00 - Insulation & Air Barrier | 10d |
| 25 |  | 07 40 00 - Exterior Cladding & Siding | 10d |
| 26 |  | 07 50 00 - Membrane Roofing | 10d |
| 27 |  | 08 10 00 - Exterior Doors & Frames | 10d |
| 28 |  | 08 50 00 - Windows | 10d |
| 29 | 7 | **MEP Rough-ins** |  |
| 30 |  | 21 00 00 - Fire Suppression Rough-in | 10d |
| 31 |  | 22 00 00 - Plumbing Rough-in | 10d |
| 32 |  | 23 00 00 - HVAC Rough-in | 10d |
| 33 |  | 26 00 00 - Electrical Rough-in | 10d |
| 34 |  | 27 00 00 - Communications & Security Rough-in | 10d |
| 35 | 8 | **Interior Finishes** |  |
| 36 |  | 06 40 00 - Millwork & Architectural Woodwork | 10d |
| 37 |  | 09 21 00 - Gypsum Board Assemblies | 10d |
| 38 |  | 09 30 00 - Tiling | 10d |
| 39 |  | 09 50 00 - Ceilings | 10d |
| 40 |  | 09 60 00 - Flooring | 10d |
| 41 |  | 09 90 00 - Painting & Coatings | 10d |
| 42 |  | 10 00 00 - Specialties & Accessories | 10d |
| 43 |  | 22 40 00 - Plumbing Fixtures & Trim | 10d |
| 44 |  | 26 50 00 - Lighting & Devices | 10d |
| 45 | 9 | **External Works & Landscaping** |  |
| 46 |  | 32 10 00 - Paving & Curbs | 10d |
| 47 |  | 32 30 00 - Site Improvements & Fencing | 10d |
| 48 |  | 32 90 00 - Landscaping | 10d |
| 49 | 10 | **Testing, Commissioning & Handover** |  |
| 50 |  | 01 45 00 - Final Inspections & Deficiency Rectification | 10d |
| 51 |  | 01 78 00 - Closeout Submittals (O&M, As-Builts, Warranties) | 10d |
| 52 |  | 01 91 00 - Commissioning & Systems Testing | 10d |
| 53 | 11 | **Milestones** |  |
| 54 |  | Notice to Proceed | 0d |
| 55 |  | Building Permit Issued | 0d |
| 56 |  | Foundations Complete | 0d |
| 57 |  | Structure Topped Out | 0d |
| 58 |  | Building Weathertight | 0d |
| 59 |  | Substantial Performance | 0d |
| 60 |  | Total Completion / Handover | 0d |

## Version 2 (saved 2026-08-13)

Note of the change: Add starter predecessor logic to template XML

Changed:

| ID | Task | Predecessors |
| --- | --- | --- |
| 2 | 00 52 00 - Subcontractor Buyout & Agreements | none → 54 |
| 3 | 01 33 00 - Submittals & Shop Drawings | none → 2 |
| 4 | 01 41 00 - Permits & Regulatory Approvals | none → 54 |
| 6 | 01 50 00 - Temporary Facilities & Site Controls | none → 4 |
| 7 | 01 56 00 - Temporary Barriers, Hoarding & Fencing | none → 6SS |
| 9 | 02 41 00 - Demolition | none → 6 |
| 10 | 31 10 00 - Site Clearing | none → 9 |
| 11 | 31 23 00 - Excavation & Fill | none → 10 |
| 12 | 33 10 00 - Underground Site Services | none → 11SS+5d |
| 14 | 03 30 00 - Cast-in-Place Concrete - Footings & Foundations | none → 11, 3 |
| 15 | 07 11 00 - Foundation Dampproofing & Waterproofing | none → 14 |
| 16 | 33 46 00 - Foundation Drainage | none → 15SS |
| 18 | 03 30 00 - Cast-in-Place Concrete - Structure | none → 14 |
| 19 | 05 10 00 - Structural Steel Framing | none → 18 |
| 20 | 05 30 00 - Metal Decking | none → 19SS+3d |
| 21 | 06 10 00 - Rough Carpentry & Framing | none → 20 |
| 23 | 04 20 00 - Unit Masonry | none → 20 |
| 24 | 07 20 00 - Insulation & Air Barrier | none → 23SS+5d |
| 25 | 07 40 00 - Exterior Cladding & Siding | none → 24SS+5d |
| 26 | 07 50 00 - Membrane Roofing | none → 20 |
| 27 | 08 10 00 - Exterior Doors & Frames | none → 25 |
| 28 | 08 50 00 - Windows | none → 25SS |
| 30 | 21 00 00 - Fire Suppression Rough-in | none → 21 |
| 31 | 22 00 00 - Plumbing Rough-in | none → 30SS |
| 32 | 23 00 00 - HVAC Rough-in | none → 30SS |
| 33 | 26 00 00 - Electrical Rough-in | none → 30SS |
| 34 | 27 00 00 - Communications & Security Rough-in | none → 33SS+5d |
| 36 | 06 40 00 - Millwork & Architectural Woodwork | none → 41 |
| 37 | 09 21 00 - Gypsum Board Assemblies | none → 28, 33 |
| 38 | 09 30 00 - Tiling | none → 37 |
| 39 | 09 50 00 - Ceilings | none → 37SS+5d |
| 40 | 09 60 00 - Flooring | none → 41 |
| 41 | 09 90 00 - Painting & Coatings | none → 37 |
| 42 | 10 00 00 - Specialties & Accessories | none → 40 |
| 43 | 22 40 00 - Plumbing Fixtures & Trim | none → 41, 38 |
| 44 | 26 50 00 - Lighting & Devices | none → 39 |
| 46 | 32 10 00 - Paving & Curbs | none → 25, 12 |
| 47 | 32 30 00 - Site Improvements & Fencing | none → 46SS |
| 48 | 32 90 00 - Landscaping | none → 46 |
| 50 | 01 45 00 - Final Inspections & Deficiency Rectification | none → 52 |
| 51 | 01 78 00 - Closeout Submittals (O&M, As-Builts, Warranties) | none → 50SS |
| 52 | 01 91 00 - Commissioning & Systems Testing | none → 43, 44 |
| 55 | Building Permit Issued | none → 4 |
| 56 | Foundations Complete | none → 15, 16 |
| 57 | Structure Topped Out | none → 21 |
| 58 | Building Weathertight | none → 26, 27, 28 |
| 59 | Substantial Performance | none → 50 |
| 60 | Total Completion / Handover | none → 51 |
